# plano de projecto

Schedule from MS Project, 2018-05-14 to 2018-08-03.

## Calendars

- Standard: Mon-Fri 08:00-12:00, 13:00-17:00; Sat-Sun off.

## Resources

| Resource | Rate |
| --- | --- |
| Eden Massalonga | 125 |
| Edio Ngungulo | 125 |
| Felizardo Massimbe | 125 |
| Mucumbe Blandino | 125 |

## Schedule

| ID | WBS | Task | Duration | Start | Finish | Predecessors | Total slack | Free slack | Constraint |
| --- | --- | --- | --- | --- | --- | --- | --- | --- | --- |
| 1 | 1 | **Sistema de Gestao Academica** | 60d | 2018-05-14 | 2018-08-03 |  | 0d |  |  |
| 2 | 1.1 | **Modulo de Cadastro** | 20d | 2018-05-14 | 2018-06-08 |  | 0d |  |  |
| 3 | 1.1.1 | **Elicitacao de Requisitos** | 5d | 2018-05-14 | 2018-05-18 |  | 0d |  |  |
| 4 | 1.1.1.1 | Reuniao de Abertura | 1d | 2018-05-14 | 2018-05-14 |  | 0d |  | start no earlier than 2018-05-14 |
| 5 | 1.1.1.2 | Discusao dos Requisitos | 1d | 2018-05-15 | 2018-05-15 | 4 | 0d |  |  |
| 6 | 1.1.1.3 | Entrevista com o Focal Point | 1d | 2018-05-16 | 2018-05-16 | 5 | 0d |  |  |
| 7 | 1.1.1.4 | Inquerito e Pesquisa de Procedimentos | 1d | 2018-05-16 | 2018-05-16 | 5 | 0d |  |  |
| 8 | 1.1.1.5 | Prototipagem da Solucao | 2d | 2018-05-17 | 2018-05-18 | 5, 6, 7 | 0d |  |  |
| 9 | 1.1.2 | **Documentacao** | 5d | 2018-05-21 | 2018-05-25 |  | 0d |  |  |
| 10 | 1.1.2.1 | Registo do Escopo do Produto | 1d | 2018-05-21 | 2018-05-21 | 8 | 0d |  |  |
| 11 | 1.1.2.2 | Contrucao dos Casos de Uso | 1d | 2018-05-22 | 2018-05-22 | 10 | 0d |  |  |
| 12 | 1.1.2.3 | Especificacao dos casos de Uso | 2d | 2018-05-22 | 2018-05-23 | 11SS | 0d |  |  |
| 13 | 1.1.2.4 | Construcao do Modelo Relacional | 2d | 2018-05-22 | 2018-05-23 | 10 | 47d | 0d |  |
| 14 | 1.1.2.5 | Prototipagem das Interfaces de Utilizador | 2d | 2018-05-24 | 2018-05-25 | 12 | 0d |  |  |
| 15 | 1.1.2.6 | Construcao dos Casos de Teste | 2d | 2018-05-24 | 2018-05-25 | 12 | 50d |  |  |
| 16 | 1.1.2.7 | Composicao do Documento de Requisitos | 4d | 2018-05-22 | 2018-05-25 | 10 | 50d |  |  |
| 17 | 1.1.3 | **Implementacao** | 10d | 2018-05-21 | 2018-06-01 |  | 2d |  |  |
| 18 | 1.1.3.1 | Configuracao do Ambiente de Desenvolvimento | 1d | 2018-05-21 | 2018-05-21 | 8 | 2d | 0d |  |
| 19 | 1.1.3.2 | Criacao das Interfaces de Utilizador | 4d | 2018-05-24 | 2018-05-29 | 14SS, 12SS, 18 | 0d |  |  |
| 20 | 1.1.3.3 | Criacao da Camada de Dados da Aplicacao | 4d | 2018-05-22 | 2018-05-25 | 13SS, 18 | 46d | 2d |  |
| 21 | 1.1.3.4 | Criacao da Camada de Negocio da Aplicacao | 4d | 2018-05-22 | 2018-05-25 | 18, 12SS | 46d | 2d |  |
| 22 | 1.1.3.5 | Criacao dos Controladores da Aplicacao | 3d | 2018-05-28 | 2018-05-30 | 19SS+2d, 20SS+2d, 21SS+2d | 45d | 0d |  |
| 23 | 1.1.3.6 | Compilacao dos trabalhos e acertos finais | 2d | 2018-05-31 | 2018-06-01 | 22, 19, 20, 21 | 45d |  |  |
| 24 | 1.1.4 | **Teste** | 5d | 2018-05-28 | 2018-06-01 |  | 0d |  |  |
| 25 | 1.1.4.1 | Teste de Interfaces de Utilizador | 3d | 2018-05-28 | 2018-05-30 | 19SS+2d | 0d |  |  |
| 26 | 1.1.4.2 | Teste de Camada de Negocio | 3d | 2018-05-28 | 2018-05-30 | 25SS | 44d | 0d |  |
| 27 | 1.1.4.3 | Teste de Camada de Acesso a Dados | 3d | 2018-05-28 | 2018-05-30 | 26SS | 44d | 0d |  |
| 28 | 1.1.4.4 | Teste dos Controladores | 2d | 2018-05-28 | 2018-05-29 | 27SS | 45d | 1d |  |
| 29 | 1.1.4.5 | Teste de Integracao de Funcionalidades | 2d | 2018-05-31 | 2018-06-01 | 28, 27, 26, 25 | 45d |  |  |
| 30 | 1.1.4.6 | Relatorio de Testes | 5d | 2018-05-28 | 2018-06-01 | 25SS | 0d |  |  |

| ID | WBS | Task | Duration | Start | Finish | Predecessors | Total slack | Free slack | Constraint |
| --- | --- | --- | --- | --- | --- | --- | --- | --- | --- |
| 31 | 1.1.5 | **Implantacao** | 2d | 2018-06-04 | 2018-06-05 |  | 0d |  |  |
| 32 | 1.1.5.1 | Instalacao do Sistema Operativo | 1d | 2018-06-04 | 2018-06-04 | 30 | 0d |  |  |
| 33 | 1.1.5.2 | Configuracao do Ambiente de Producao | 1d | 2018-06-04 | 2018-06-04 | 32SS | 0d |  |  |
| 34 | 1.1.5.3 | Instalacao da Aplicacao | 1d | 2018-06-04 | 2018-06-04 | 33SS | 0d |  |  |
| 35 | 1.1.5.4 | Teste de Integracao e Correcoes Finais | 1d | 2018-06-05 | 2018-06-05 | 34 | 0d |  |  |
| 36 | 1.1.6 | **Formacao** | 4d | 2018-06-05 | 2018-06-08 |  | 0d |  |  |
| 37 | 1.1.6.1 | Discussao do Plano de Formacao e Preparacao do Ambiente de Trabalho | 1d | 2018-06-05 | 2018-06-05 | 35SS | 0d |  |  |
| 38 | 1.1.6.2 | Formacao do Pessoal Tecnico e Operacional | 2d | 2018-06-06 | 2018-06-07 | 37 | 0d |  |  |
| 39 | 1.1.6.3 | Relatorio de Formacao | 1d | 2018-06-08 | 2018-06-08 | 38 | 0d |  |  |
| 40 | 1.2 | **Modulo Pedagogico** | 20d | 2018-06-11 | 2018-07-06 |  | 0d |  |  |
| 41 | 1.2.1 | **Elicitacao de Requisitos** | 5d | 2018-06-11 | 2018-06-15 |  | 0d |  |  |
| 42 | 1.2.1.1 | Reuniao de Abertura | 1d | 2018-06-11 | 2018-06-11 | 39 | 0d |  | start no earlier than 2018-05-14 |
| 43 | 1.2.1.2 | Discusao dos Requisitos | 1d | 2018-06-12 | 2018-06-12 | 42 | 0d |  |  |
| 44 | 1.2.1.3 | Entrevista com o Focal Point | 1d | 2018-06-13 | 2018-06-13 | 43 | 0d |  |  |
| 45 | 1.2.1.4 | Inquerito e Pesquisa de Procedimentos | 1d | 2018-06-13 | 2018-06-13 | 43 | 0d |  |  |
| 46 | 1.2.1.5 | Prototipagem da Solucao | 2d | 2018-06-14 | 2018-06-15 | 43, 44, 45 | 0d |  |  |
| 47 | 1.2.2 | **Documentacao** | 5d | 2018-06-18 | 2018-06-22 |  | 0d |  |  |
| 48 | 1.2.2.1 | Registo do Escopo do Produto | 1d | 2018-06-18 | 2018-06-18 | 46 | 0d |  |  |
| 49 | 1.2.2.2 | Contrucao dos Casos de Uso | 1d | 2018-06-19 | 2018-06-19 | 48 | 0d |  |  |
| 50 | 1.2.2.3 | Especificacao dos casos de Uso | 2d | 2018-06-19 | 2018-06-20 | 49SS | 0d |  |  |
| 51 | 1.2.2.4 | Construcao do Modelo Relacional | 2d | 2018-06-19 | 2018-06-20 | 48 | 26d | 0d |  |
| 52 | 1.2.2.5 | Prototipagem das Interfaces de Utilizador | 2d | 2018-06-21 | 2018-06-22 | 50 | 0d |  |  |
| 53 | 1.2.2.6 | Construcao dos Casos de Teste | 2d | 2018-06-21 | 2018-06-22 | 50 | 29d |  |  |
| 54 | 1.2.2.7 | Composicao do Documento de Requisitos | 4d | 2018-06-19 | 2018-06-22 | 48 | 29d |  |  |

| ID | WBS | Task | Duration | Start | Finish | Predecessors | Total slack | Free slack | Constraint |
| --- | --- | --- | --- | --- | --- | --- | --- | --- | --- |
| 55 | 1.2.3 | **Implementacao** | 10d | 2018-06-18 | 2018-06-29 |  | 2d |  |  |
| 56 | 1.2.3.1 | Configuracao do Ambiente de Desenvolvimento | 1d | 2018-06-18 | 2018-06-18 | 46 | 2d | 0d |  |
| 57 | 1.2.3.2 | Criacao das Interfaces de Utilizador | 4d | 2018-06-21 | 2018-06-26 | 50SS, 52SS, 56 | 0d |  |  |
| 58 | 1.2.3.3 | Criacao da Camada de Dados da Aplicacao | 4d | 2018-06-19 | 2018-06-22 | 51SS, 56 | 26d | 2d |  |
| 59 | 1.2.3.4 | Criacao da Camada de Negocio da Aplicacao | 4d | 2018-06-19 | 2018-06-22 | 50SS, 56 | 26d | 2d |  |
| 60 | 1.2.3.5 | Criacao dos Controladores da Aplicacao | 3d | 2018-06-25 | 2018-06-27 | 57SS+2d, 58SS+2d, 59SS+2d | 24d | 0d |  |
| 61 | 1.2.3.6 | Compilacao dos trabalhos e acertos finais | 2d | 2018-06-28 | 2018-06-29 | 57, 58, 59, 60 | 24d |  |  |
| 62 | 1.2.4 | **Teste** | 5d | 2018-06-25 | 2018-06-29 |  | 0d |  |  |
| 63 | 1.2.4.1 | Teste de Interfaces de Utilizador | 3d | 2018-06-25 | 2018-06-27 | 57SS+2d | 0d |  |  |
| 64 | 1.2.4.2 | Teste de Camada de Negocio | 3d | 2018-06-25 | 2018-06-27 | 63SS | 24d | 0d |  |
| 65 | 1.2.4.3 | Teste de Camada de Acesso a Dados | 3d | 2018-06-25 | 2018-06-27 | 64SS | 24d | 0d |  |
| 66 | 1.2.4.4 | Teste dos Controladores | 2d | 2018-06-25 | 2018-06-26 | 65SS | 25d | 1d |  |
| 67 | 1.2.4.5 | Teste de Integracao de Funcionalidades | 2d | 2018-06-28 | 2018-06-29 | 63, 64, 65, 66 | 24d |  |  |
| 68 | 1.2.4.6 | Relatorio de Testes | 5d | 2018-06-25 | 2018-06-29 | 63SS | 0d |  |  |
| 69 | 1.2.5 | **Implantacao** | 2d | 2018-07-02 | 2018-07-03 |  | 0d |  |  |
| 70 | 1.2.5.1 | Instalacao do Sistema Operativo | 1d | 2018-07-02 | 2018-07-02 | 68 | 0d |  |  |
| 71 | 1.2.5.2 | Configuracao do Ambiente de Producao | 1d | 2018-07-02 | 2018-07-02 | 70SS | 0d |  |  |
| 72 | 1.2.5.3 | Instalacao da Aplicacao | 1d | 2018-07-02 | 2018-07-02 | 71SS | 0d |  |  |
| 73 | 1.2.5.4 | Teste de Integracao e Correcoes Finais | 1d | 2018-07-03 | 2018-07-03 | 72 | 0d |  |  |
| 74 | 1.2.6 | **Formacao** | 4d | 2018-07-03 | 2018-07-06 |  | 0d |  |  |
| 75 | 1.2.6.1 | Discussao do Plano de Formacao e Preparacao do Ambiente de Trabalho | 1d | 2018-07-03 | 2018-07-03 | 73SS | 0d |  |  |
| 76 | 1.2.6.2 | Formacao do Pessoal Tecnico e Operacional | 2d | 2018-07-04 | 2018-07-05 | 75 | 0d |  |  |
| 77 | 1.2.6.3 | Relatorio de Formacao | 1d | 2018-07-06 | 2018-07-06 | 76 | 0d |  |  |
| 78 | 1.3 | **Modulo de Relatorio** | 20d | 2018-07-09 | 2018-08-03 |  | 0d |  |  |
| 79 | 1.3.1 | **Elicitacao de Requisitos** | 5d | 2018-07-09 | 2018-07-13 |  | 0d |  |  |
| 80 | 1.3.1.1 | Reuniao de Abertura | 1d | 2018-07-09 | 2018-07-09 | 77 | 0d |  | start no earlier than 2018-05-14 |
| 81 | 1.3.1.2 | Discusao dos Requisitos | 1d | 2018-07-10 | 2018-07-10 | 80 | 0d |  |  |
| 82 | 1.3.1.3 | Entrevista com o Focal Point | 1d | 2018-07-11 | 2018-07-11 | 81 | 0d |  |  |
| 83 | 1.3.1.4 | Inquerito e Pesquisa de Procedimentos | 1d | 2018-07-11 | 2018-07-11 | 81 | 0d |  |  |
| 84 | 1.3.1.5 | Prototipagem da Solucao | 2d | 2018-07-12 | 2018-07-13 | 81, 82, 83 | 0d |  |  |

| ID | WBS | Task | Duration | Start | Finish | Predecessors | Total slack | Free slack |
| --- | --- | --- | --- | --- | --- | --- | --- | --- |
| 85 | 1.3.2 | **Documentacao** | 5d | 2018-07-16 | 2018-07-20 |  | 0d |  |
| 86 | 1.3.2.1 | Registo do Escopo do Produto | 1d | 2018-07-16 | 2018-07-16 | 84 | 0d |  |
| 87 | 1.3.2.2 | Contrucao dos Casos de Uso | 1d | 2018-07-17 | 2018-07-17 | 86 | 0d |  |
| 88 | 1.3.2.3 | Especificacao dos casos de Uso | 2d | 2018-07-17 | 2018-07-18 | 87SS | 0d |  |
| 89 | 1.3.2.4 | Construcao do Modelo Relacional | 2d | 2018-07-17 | 2018-07-18 | 86 | 7d | 0d |
| 90 | 1.3.2.5 | Prototipagem das Interfaces de Utilizador | 2d | 2018-07-19 | 2018-07-20 | 88 | 0d |  |
| 91 | 1.3.2.6 | Construcao dos Casos de Teste | 2d | 2018-07-19 | 2018-07-20 | 88 | 10d |  |
| 92 | 1.3.2.7 | Composicao do Documento de Requisitos | 4d | 2018-07-17 | 2018-07-20 | 86 | 10d |  |
| 93 | 1.3.3 | **Implementacao** | 10d | 2018-07-16 | 2018-07-27 |  | 2d |  |
| 94 | 1.3.3.1 | Configuracao do Ambiente de Desenvolvimento | 1d | 2018-07-16 | 2018-07-16 | 84 | 2d | 0d |
| 95 | 1.3.3.2 | Criacao das Interfaces de Utilizador | 4d | 2018-07-19 | 2018-07-24 | 88SS, 90SS, 94 | 0d |  |
| 96 | 1.3.3.3 | Criacao da Camada de Dados da Aplicacao | 4d | 2018-07-17 | 2018-07-20 | 89SS, 94 | 7d | 2d |
| 97 | 1.3.3.4 | Criacao da Camada de Negocio da Aplicacao | 4d | 2018-07-17 | 2018-07-20 | 88SS, 94 | 7d | 2d |
| 98 | 1.3.3.5 | Criacao dos Controladores da Aplicacao | 3d | 2018-07-23 | 2018-07-25 | 95SS+2d, 96SS+2d, 97SS+2d | 5d | 0d |
| 99 | 1.3.3.6 | Compilacao dos trabalhos e acertos finais | 2d | 2018-07-26 | 2018-07-27 | 95, 96, 97, 98 | 5d |  |
| 100 | 1.3.4 | **Teste** | 5d | 2018-07-23 | 2018-07-27 |  | 0d |  |
| 101 | 1.3.4.1 | Teste de Interfaces de Utilizador | 3d | 2018-07-23 | 2018-07-25 | 95SS+2d | 0d |  |
| 102 | 1.3.4.2 | Teste de Camada de Negocio | 3d | 2018-07-23 | 2018-07-25 | 101SS | 5d | 0d |
| 103 | 1.3.4.3 | Teste de Camada de Acesso a Dados | 3d | 2018-07-23 | 2018-07-25 | 102SS | 5d | 0d |
| 104 | 1.3.4.4 | Teste dos Controladores | 2d | 2018-07-23 | 2018-07-24 | 103SS | 6d | 1d |
| 105 | 1.3.4.5 | Teste de Integracao de Funcionalidades | 2d | 2018-07-26 | 2018-07-27 | 101, 102, 103, 104 | 5d |  |
| 106 | 1.3.4.6 | Relatorio de Testes | 5d | 2018-07-23 | 2018-07-27 | 101SS | 0d |  |
| 107 | 1.3.5 | **Implantacao** | 2d | 2018-07-30 | 2018-07-31 |  | 0d |  |
| 108 | 1.3.5.1 | Instalacao do Sistema Operativo | 1d | 2018-07-30 | 2018-07-30 | 106 | 0d |  |
| 109 | 1.3.5.2 | Configuracao do Ambiente de Producao | 1d | 2018-07-30 | 2018-07-30 | 108SS | 0d |  |
| 110 | 1.3.5.3 | Instalacao da Aplicacao | 1d | 2018-07-30 | 2018-07-30 | 109SS | 0d |  |
| 111 | 1.3.5.4 | Teste de Integracao e Correcoes Finais | 1d | 2018-07-31 | 2018-07-31 | 110 | 0d |  |

| ID | WBS | Task | Duration | Start | Finish | Predecessors | Total slack |
| --- | --- | --- | --- | --- | --- | --- | --- |
| 112 | 1.3.6 | **Formacao** | 4d | 2018-07-31 | 2018-08-03 |  | 0d |
| 113 | 1.3.6.1 | Discussao do Plano de Formacao e Preparacao do Ambiente de Trabalho | 1d | 2018-07-31 | 2018-07-31 | 111SS | 0d |
| 114 | 1.3.6.2 | Formacao do Pessoal Tecnico e Operacional | 2d | 2018-08-01 | 2018-08-02 | 113 | 0d |
| 115 | 1.3.6.3 | Relatorio de Formacao | 1d | 2018-08-03 | 2018-08-03 | 114 | 0d |
